How a schedule from MS Project changed from version to version. A marks actual dates.

## Version 1 (saved 2026-10-16, file Проект1 — Комбинированное_выравнивание.mpp)

| ID | WBS | Task | Duration | Start | Finish | Predecessors | Total float | Constraint |
| --- | --- | --- | --- | --- | --- | --- | --- | --- |
| 1 |  | Начало проекта | 0d | 2026-10-05 | 2026-10-05 |  |  |  |
| 2 | 2 | **Анализ требований** | 13d | 2026-10-05 | 2026-10-21 |  | 0d |  |
| 3 |  | Встреча с заказчиком | 1d | 2026-10-05 | 2026-10-05 | 1 |  |  |
| 4 |  | Сбор информации | 12d | 2026-10-06 | 2026-10-21 | 3 | 52d |  |
| 5 |  | Написание документа требований | 2d | 2026-10-06 | 2026-10-07 | 3 |  |  |
| 6 |  | Обсуждение требований с заказчиком | 1d | 2026-10-08 | 2026-10-08 | 5 |  |  |
| 7 |  | Корректировка требований | 1d | 2026-10-09 | 2026-10-09 | 6 |  |  |
| 8 |  | Подготовка договора и устава | 2d | 2026-10-09 | 2026-10-12 | 6 |  |  |
| 9 |  | Согласование документов с заказчиком | 2d | 2026-10-13 | 2026-10-14 | 7, 8 | 0d |  |
| 10 |  | Анализ требований | 0d | 2026-10-15 | 2026-10-15 | 9 |  |  |
| 11 | 3 | **Разработка ТЗ** | 15d | 2026-10-09 | 2026-10-29 |  | 0d |  |
| 12 |  | Определение структуры веб-приложения | 7d | 2026-10-15 | 2026-10-23 | 10 |  |  |
| 13 |  | Выбор технологий | 2d | 2026-10-22 | 2026-10-23 | 10 | 0d | as late as possible |
| 14 |  | Разработка ТЗ | 4d | 2026-10-26 | 2026-10-29 | 12, 13 |  |  |
| 15 |  | Согласование ТЗ с заказчиком | 2d | 2026-10-09 | 2026-10-12 | 14 |  |  |
| 16 |  | Завершение разработки ТЗ | 0d | 2026-10-13 | 2026-10-13 | 15 |  |  |
| 17 | 4 | **Создание прототипа** | 6d | 2026-10-13 | 2026-10-21 |  | 0d |  |
| 18 |  | Создание прототипа | 4d | 2026-10-13 | 2026-10-16 | 16 |  |  |
| 19 |  | Согласование с заказчиком | 2d | 2026-10-19 | 2026-10-20 | 18 |  |  |
| 20 |  | Завершение создания прототипа | 0d | 2026-10-21 | 2026-10-21 | 19 |  |  |
| 21 | 5 | **Разработка дизайна веб-приложения** | 12d | 2026-10-21 | 2026-11-05 |  | 0d |  |
| 22 |  | Разработка макетов страниц | 12d | 2026-10-21 | 2026-11-05 | 20 |  |  |
| 23 |  | Согласование макетов с заказчиком | 4d | 2026-10-21 | 2026-10-26 | 22 |  |  |
| 24 |  | Доработка макетов | 1d | 2026-10-27 | 2026-10-27 | 23 |  |  |
| 25 |  | Утверждение окончательного варианта | 1d | 2026-11-02 | 2026-11-02 | 24FS+3d |  |  |
| 26 |  | Завершение разработки дизайна | 0d | 2026-10-29 | 2026-10-29 | 25 |  |  |
| 27 | 6 | **Верстка и программирование** | 29d | 2026-10-29 | 2026-12-09 |  |  |  |
| 28 |  | Разработка клиентской части приложения | 16d | 2026-10-29 | 2026-11-19 | 26 |  |  |
| 29 |  | Разработка серверной части приложения | 15d | 2026-10-29 | 2026-11-18 | 26 |  |  |
| 30 |  | Подготовка контента и заполнение страниц | 4d | 2026-11-20 | 2026-11-25 | 28 |  |  |
| 31 |  | Тестирование | 2d | 2026-11-26 | 2026-11-27 | 29, 30 |  |  |
| 32 |  | Правка кода, устранение сбоев в работе | 4d | 2026-11-30 | 2026-12-03 | 31 |  |  |
| 33 |  | Интеграция с внешними системами и сервисами | 3d | 2026-12-04 | 2026-12-08 | 32 |  |  |
| 34 |  | Завершение верстки и программирования | 0d | 2026-12-09 | 2026-12-09 | 33 |  |  |
| 35 | 7 | **Тестирование и отладка веб-приложения** | 13d | 2026-12-09 | 2026-12-29 |  | 0d |  |
| 36 |  | Техническое тестирование | 2d | 2026-12-09 | 2026-12-10 | 34 |  |  |
| 37 |  | Тестирование на стороне заказчика | 4d | 2026-12-11 | 2026-12-16 | 36 |  |  |
| 38 |  | Отладка | 7d | 2026-12-17 | 2026-12-29 | 37 |  |  |
| 39 |  | Завершение тестирования и отладки | 0d | 2026-12-29 | 2026-12-29 | 38 |  |  |
| 40 | 8 | **Внедрение** | 63d | 2026-10-07 | 2027-01-06 |  | 0d |  |
| 41 |  | Перенос на рабочий сервер | 2d | 2026-12-29 | 2026-12-31 | 39 |  |  |
| 42 |  | Формирование отчетности | 3d | 2026-12-29 | 2027-01-04 | 39 |  |  |
| 43 |  | Передача веб-приложения заказчику | 2d | 2027-01-04 | 2027-01-06 | 41, 42 |  |  |
| 44 |  | Завершение внедрения | 0d | 2026-10-07 | 2026-10-07 | 43 |  |  |
| 45 |  | Завершение проекта | 0d | 2026-10-07 | 2026-10-07 | 44 |  |  |

## Version 2 (saved 2026-10-16, file Проект1 — Автоматическое.mpp)

Last finish stays 2027-01-06.

Changed:

| ID | Task | Start | Finish | Duration | Total float |
| --- | --- | --- | --- | --- | --- |
| 2 | **Анализ требований** |  | 2026-10-21 → 2026-11-17 (+27d) | 13d → 32d |  |
| 4 | Сбор информации |  | 2026-10-21 → 2026-11-17 (+27d) | 12d → 27d | 52d → 33d |
| 6 | Обсуждение требований с заказчиком |  | 2026-10-08 → 2026-10-14 (+6d) | 1d → 2d |  |
| 7 | Корректировка требований |  | 2026-10-09 → 2026-10-16 (+7d) | 1d → 2d |  |
| 9 | Согласование документов с заказчиком | 2026-10-13 → 2026-10-19 (+6d) | 2026-10-14 → 2026-10-28 (+14d) | 2d → 4d | 0d → -10d |
| 11 | **Разработка ТЗ** | 2026-10-09 → 2026-10-12 (+3d) | 2026-10-29 → 2026-11-06 (+8d) | 15d → 20d |  |
| 12 | Определение структуры веб-приложения | 2026-10-15 → 2026-10-21 (+6d) | 2026-10-23 → 2026-11-02 (+10d) |  |  |
| 14 | Разработка ТЗ |  | 2026-10-29 → 2026-11-06 (+8d) | 4d → 9d |  |
| 15 | Согласование ТЗ с заказчиком | 2026-10-09 → 2026-10-12 (+3d) | 2026-10-12 → 2026-10-20 (+8d) | 2d → 4d |  |
| 21 | **Разработка дизайна веб-приложения** |  | 2026-11-05 → 2026-11-13 (+8d) | 12d → 18d |  |
| 22 | Разработка макетов страниц |  | 2026-11-05 → 2026-11-09 (+4d) |  |  |
| 23 | Согласование макетов с заказчиком |  | 2026-10-26 → 2026-11-13 (+18d) | 4d → 8d |  |

## Version 3 (saved 2026-10-16, file Проект1 —Замена_ресурсов .mpp)

Last finish stays 2027-01-06.

Changed:

| ID | Task | Start | Finish | Duration | Total float | Other |
| --- | --- | --- | --- | --- | --- | --- |
| 4 | Сбор информации |  |  | 27d → 14d |  | resources Бизнес-аналитик; Руководитель проекта; Дизайнер; Интернет [0.1%] → Тест-инженер; Контент-менеджер; Дизайнер; Интернет [0.1%] |
| 6 | Обсуждение требований с заказчиком |  | 2026-10-14 → 2026-10-08 (-6d) | 2d → 1d |  |  |
| 7 | Корректировка требований |  | 2026-10-16 → 2026-10-13 (-3d) |  |  |  |
| 9 | Согласование документов с заказчиком | 2026-10-19 → 2026-10-14 (-5d) | 2026-10-28 → 2026-11-03 (+6d) |  | -10d → -14d |  |
| 14 | Разработка ТЗ |  |  | 9d → 8d |  |  |
| 15 | Согласование ТЗ с заказчиком |  | 2026-10-20 → 2026-10-15 (-5d) |  |  |  |

## Version 4 (saved 2026-10-16, file Проект1 — Ручное_выравнивание.mpp)

Last finish stays 2027-01-06.

Changed:

| ID | Task | Start | Finish | Duration | Total float | Other |
| --- | --- | --- | --- | --- | --- | --- |
| 2 | **Анализ требований** |  | 2026-11-17 → 2026-11-04 (-13d) | 32d → 23d |  |  |
| 4 | Сбор информации | 2026-10-06 → 2026-10-12 (+6d) | 2026-11-17 → 2026-11-04 (-13d) | 14d → 12d | 33d → 42d | resources Тест-инженер; Контент-менеджер; Дизайнер; Интернет [0.1%] → Бизнес-аналитик; Интернет [0.1%] |

## Version 5 (saved 2026-10-16, file Проект1 — Перенос_сверхурочные.mpp)

Last finish stays 2027-01-06.

Changed:

| ID | Task | Start | Finish | Duration | Total float | Other |
| --- | --- | --- | --- | --- | --- | --- |
| 2 | **Анализ требований** |  | 2026-11-04 → 2026-11-19 (+15d) | 23d → 33.33d | -7d → -1.8d |  |
| 4 | Сбор информации | 2026-10-12 → 2026-10-06 (-6d) | 2026-11-04 → 2026-11-19 (+15d) | 12d → 26.13d | 42d → 31.67d | resources Бизнес-аналитик; Интернет [0.1%] → Бизнес-аналитик; Руководитель проекта; Дизайнер; Интернет [0.1%] |
| 6 | Обсуждение требований с заказчиком |  | 2026-10-08 → 2026-10-14 (+6d) | 1d → 2d |  |  |
| 7 | Корректировка требований |  | 2026-10-13 → 2026-10-14 (+1d) |  |  |  |
| 9 | Согласование документов с заказчиком | 2026-10-14 → 2026-10-15 (+1d) | 2026-11-03 → 2026-10-28 (-6d) |  | -14d → -10d |  |
| 14 | Разработка ТЗ |  |  | 8d → 9d |  |  |
| 15 | Согласование ТЗ с заказчиком |  | 2026-10-15 → 2026-10-16 (+1d) | 4d → 3.8d |  |  |

## Version 6 (saved 2026-10-30, file Проект1 — Параметрический_анализ— копия.mpp)

Note of the change: AddLabs

Last finish stays 2027-01-06.

Added:

| ID | Task | Duration | Start | Finish |
| --- | --- | --- | --- | --- |
| 46 | Разработка макетов страниц | 1d? | 2026-10-07 | 2026-10-07 |

Changed:

| ID | Task | Start | Finish | Duration | Total float |
| --- | --- | --- | --- | --- | --- |
| 2 | **Анализ требований** |  | 2026-11-19 → 2026-11-17 (-2d) | 33.33d → 32d | -1.8d → 0d |
| 4 | Сбор информации |  | 2026-11-19 → 2026-11-17 (-2d) | 26.13d → 27d | 31.67d → 33d |
| 7 | Корректировка требований |  | 2026-10-14 → 2026-10-16 (+2d) |  |  |
| 9 | Согласование документов с заказчиком | 2026-10-15 → 2026-10-19 (+4d) |  |  |  |
| 15 | Согласование ТЗ с заказчиком |  | 2026-10-16 → 2026-10-20 (+4d) | 3.8d → 4d |  |

## Version 7 (saved 2026-10-30, file Процент.mpp)

Note of the change: AddPMP_10

Last finish 2027-01-06 → 2027-02-08 (+33d).

Added:

| ID | Task | Duration | Start | Finish | Predecessors | Resources |
| --- | --- | --- | --- | --- | --- | --- |
| 18 | Создание прототипа | 4d | 2026-10-21 A | 2026-10-26 | 16 | Веб-архитектор |
| 30 | Подготовка контента и заполнение | 4d | 2026-12-21 | 2026-12-29 | 28 | Контент-менеджер |
| 33 | Интеграция с внешними системами и | 3d | 2027-01-08 | 2027-01-13 | 32 | Бэкенд- разработчик; Интернет [0.1%] |

Removed: 17 Создание прототипа; 30 Подготовка контента и заполнение страниц; 33 Интеграция с внешними системами и сервисами; 46 Разработка макетов страниц

Changed:

| ID | Task | Start | Finish | Duration | Complete | Total float | Predecessors | Other |
| --- | --- | --- | --- | --- | --- | --- | --- | --- |
| 1 | Начало проекта | 2026-10-05 → 2026-09-18 (-17d) | 2026-10-05 → 2026-09-18 (-17d) |  |  | none → 3.4d |  | baseline start none → 2026-09-18; baseline finish none → 2026-09-18 |
| 2 | **Анализ требований** | 2026-10-05 → 2026-09-18 (-17d) | 2026-11-17 → 2026-10-14 (-34d) | 32d → 18.88d |  | 0d → 3.4d |  | baseline start none → 2026-09-18; baseline finish none → 2026-10-22 |
| 3 | Встреча с заказчиком | 2026-10-05 → 2026-09-18 (-17d) | 2026-10-05 → 2026-09-18 (-17d) |  |  | none → 3.4d |  | baseline start none → 2026-09-18; baseline finish none → 2026-09-18 |
| 4 | Сбор информации | 2026-10-06 → 2026-09-21 (-15d) | 2026-11-17 → 2026-10-14 (-34d) | 27d → 12.88d |  | 33d → 78.12d |  | baseline start none → 2026-09-21; baseline finish none → 2026-10-22 |
| 5 | Написание документа требований | 2026-10-06 → 2026-09-21 (-15d) | 2026-10-07 → 2026-09-22 (-15d) |  |  | none → 3.4d |  | baseline start none → 2026-09-21; baseline finish none → 2026-09-22 |
| 6 | Обсуждение требований с заказчиком | 2026-10-08 → 2026-09-23 (-15d) | 2026-10-14 → 2026-09-23 (-21d) | 2d → 1d |  | none → 3.4d |  | baseline start none → 2026-09-23; baseline finish none → 2026-09-23 |
| 7 | Корректировка требований | 2026-10-09 → 2026-09-24 (-15d) | 2026-10-16 → 2026-09-29 (-17d) |  |  | none → 3.4d |  | baseline start none → 2026-09-24; baseline finish none → 2026-09-29 |
| 8 | Подготовка договора и устава | 2026-10-09 → 2026-09-24 (-15d) | 2026-10-12 → 2026-09-25 (-17d) |  |  | none → 5.4d |  | baseline start none → 2026-09-24; baseline finish none → 2026-09-25 |
| 9 | Согласование документов с заказчиком | 2026-10-19 → 2026-09-30 (-19d) | 2026-10-28 → 2026-10-01 (-27d) | 4d → 2d |  | -10d → 3.4d |  | baseline start none → 2026-09-30; baseline finish none → 2026-10-01 |
| 10 | Анализ требований | 2026-10-15 → 2026-10-01 (-14d) | 2026-10-15 → 2026-10-01 (-14d) |  |  | none → 3.4d |  | baseline start none → 2026-10-01; baseline finish none → 2026-10-01 |
| 11 | **Разработка ТЗ** | 2026-10-12 → 2026-10-02 (-10d) | 2026-11-06 → 2026-10-26 (-11d) | 20d → 16.4d |  |  |  | baseline start none → 2026-10-02; baseline finish none → 2026-10-20 |
| 12 | Определение структуры веб-приложения | 2026-10-21 → 2026-10-02 (-19d) | 2026-11-02 → 2026-10-12 (-21d) |  |  | none → 3.4d |  | baseline start none → 2026-10-02; baseline finish none → 2026-10-12 |
| 13 | Выбор технологий | 2026-10-22 → 2026-10-14 (-8d) | 2026-10-23 → 2026-10-16 (-7d) |  |  |  |  | baseline start none → 2026-10-09; baseline finish none → 2026-10-12 |
| 14 | Разработка ТЗ | 2026-10-26 → 2026-10-16 (-10d) | 2026-11-06 → 2026-10-22 (-15d) | 9d → 4d |  | none → 0d |  | resources Руководитель проекта; Бизнес-аналитик; Веб-архитектор; Бумага → Руководитель проекта; Бизнес-аналитик; Бэкенд- разработчик; Бумага; baseline start none → 2026-10-13; baseline finish none → 2026-10-16 |
| 15 | Согласование ТЗ с заказчиком | 2026-10-12 → 2026-10-22 (+10d) | 2026-10-20 → 2026-10-26 (+6d) | 4d → 2d |  | none → 0d |  | baseline start none → 2026-10-19; baseline finish none → 2026-10-20 |
| 16 | Завершение разработки ТЗ | 2026-10-13 → 2026-10-26 (+13d) | 2026-10-13 → 2026-10-26 (+13d) |  |  | none → 0d |  | baseline start none → 2026-10-20; baseline finish none → 2026-10-20 |
| 17 | **Создание прототипа** | 2026-10-13 → 2026-10-21 A (+8d) | 2026-10-16 → 2026-10-28 (+12d) | 4d → 6d | 0% → 57% | none → 0d | 16 → none | resources Веб-архитектор → none; baseline start none → 2026-10-21; baseline finish none → 2026-10-28 |
| 19 | Согласование с заказчиком | 2026-10-19 → 2026-10-27 (+8d) | 2026-10-20 → 2026-10-28 (+8d) |  |  | none → 0d | 17 → 18 | baseline start none → 2026-10-27; baseline finish none → 2026-10-28 |
| 20 | Завершение создания прототипа | 2026-10-21 → 2026-10-28 (+7d) | 2026-10-21 → 2026-10-28 (+7d) |  |  | none → 0d |  | baseline start none → 2026-10-28; baseline finish none → 2026-10-28 |
| 21 | **Разработка дизайна веб-приложения** | 2026-10-21 → 2026-10-29 (+8d) | 2026-11-13 → 2026-11-27 (+14d) | 18d → 21d |  |  |  | baseline start none → 2026-10-29; baseline finish none → 2026-11-27 |
| 22 | Разработка макетов страниц | 2026-10-21 → 2026-10-29 (+8d) | 2026-11-09 → 2026-11-16 (+7d) |  |  | none → 0d |  | baseline start none → 2026-10-29; baseline finish none → 2026-11-16 |
| 23 | Согласование макетов с заказчиком | 2026-10-21 → 2026-11-16 (+26d) | 2026-11-13 → 2026-11-20 (+7d) | 8d → 4d |  | none → 0d |  | baseline start none → 2026-11-16; baseline finish none → 2026-11-20 |
| 24 | Доработка макетов | 2026-10-27 → 2026-11-25 (+29d) | 2026-10-27 → 2026-11-26 (+30d) |  |  | none → 0d | 23 → 23FS+3d | baseline start none → 2026-11-25; baseline finish none → 2026-11-26 |
| 25 | Утверждение окончательного варианта | 2026-11-02 → 2026-11-26 (+24d) | 2026-11-02 → 2026-11-27 (+25d) |  |  | none → 0d | 24FS+3d → 24 | baseline start none → 2026-11-26; baseline finish none → 2026-11-27 |
| 26 | Завершение разработки дизайна | 2026-10-29 → 2026-11-27 (+29d) | 2026-10-29 → 2026-11-27 (+29d) |  |  | none → 0d |  | baseline start none → 2026-11-27; baseline finish none → 2026-11-27 |
| 27 | **Верстка и программирование** | 2026-10-29 → 2026-11-27 (+29d) | 2026-12-09 → 2027-01-13 (+35d) |  |  | none → 0d |  | baseline start none → 2026-11-27; baseline finish none → 2027-01-13 |
| 28 | Разработка клиентской части приложения | 2026-10-29 → 2026-11-27 (+29d) | 2026-11-19 → 2026-12-21 (+32d) |  |  | none → 0d |  | baseline start none → 2026-11-27; baseline finish none → 2026-12-21 |
| 29 | Разработка серверной части приложения | 2026-10-29 → 2026-11-27 (+29d) | 2026-11-18 → 2026-12-18 (+30d) |  |  | none → 5d |  | resources Бэкенд-разработчик; Покупка лицензии на ПО → Бэкенд- разработчик; Покупка лицензии на ПО; baseline start none → 2026-11-27; baseline finish none → 2026-12-18 |
| 31 | Тестирование | 2026-11-26 → 2026-12-29 (+33d) | 2026-11-27 → 2026-12-31 (+34d) |  |  | none → 0d | 29, Подготовка контента и заполнение страниц → 29, 30 | baseline start none → 2026-12-29; baseline finish none → 2026-12-31 |
| 32 | Правка кода, устранение сбоев в работе | 2026-11-30 → 2026-12-31 (+31d) | 2026-12-03 → 2027-01-08 (+36d) |  |  | none → 0d |  | resources Фронтенд-разработчик [80%]; Бэкенд-разработчик [80%] → Фронтенд-разработчик [80%]; Бэкенд- разработчик [80%]; baseline start none → 2026-12-31; baseline finish none → 2027-01-08 |
| 34 | Завершение верстки и программирования | 2026-12-09 → 2027-01-13 (+35d) | 2026-12-09 → 2027-01-13 (+35d) |  |  | none → 0d | Интеграция с внешними системами и сервисами → 33 | baseline start none → 2027-01-13; baseline finish none → 2027-01-13 |
| 35 | **Тестирование и отладка веб-приложения** | 2026-12-09 → 2027-01-13 (+35d) | 2026-12-29 → 2027-02-01 (+34d) |  |  |  |  | baseline start none → 2027-01-13; baseline finish none → 2027-02-01 |
| 36 | Техническое тестирование | 2026-12-09 → 2027-01-13 (+35d) | 2026-12-10 → 2027-01-15 (+36d) |  |  | none → 0d |  | baseline start none → 2027-01-13; baseline finish none → 2027-01-15 |
| 37 | Тестирование на стороне заказчика | 2026-12-11 → 2027-01-15 (+35d) | 2026-12-16 → 2027-01-21 (+36d) |  |  | none → 0d |  | baseline start none → 2027-01-15; baseline finish none → 2027-01-21 |
| 38 | Отладка | 2026-12-17 → 2027-01-21 (+35d) | 2026-12-29 → 2027-02-01 (+34d) |  |  | none → 0d |  | resources Фронтенд-разработчик; Бэкенд-разработчик → Фронтенд-разработчик; Бэкенд- разработчик; baseline start none → 2027-01-21; baseline finish none → 2027-02-01 |
| 39 | Завершение тестирования и отладки | 2026-12-29 → 2027-02-01 (+34d) | 2026-12-29 → 2027-02-01 (+34d) |  |  | none → 0d |  | baseline start none → 2027-02-01; baseline finish none → 2027-02-01 |
| 40 | **Внедрение** | 2026-10-07 → 2027-02-01 (+117d) | 2027-01-06 → 2027-02-08 (+33d) | 63d → 5d |  |  |  | baseline start none → 2027-02-01; baseline finish none → 2027-02-08 |
| 41 | Перенос на рабочий сервер | 2026-12-29 → 2027-02-01 (+34d) | 2026-12-31 → 2027-02-03 (+34d) |  |  | none → 1d |  | resources Бэкенд-разработчик → Бэкенд- разработчик; baseline start none → 2027-02-01; baseline finish none → 2027-02-03 |
| 42 | Формирование отчетности | 2026-12-29 → 2027-02-01 (+34d) | 2027-01-04 → 2027-02-04 (+31d) |  |  | none → 0d |  | baseline start none → 2027-02-01; baseline finish none → 2027-02-04 |
| 43 | Передача веб-приложения заказчику | 2027-01-04 → 2027-02-04 (+31d) | 2027-01-06 → 2027-02-08 (+33d) |  |  | none → 0d |  | baseline start none → 2027-02-04; baseline finish none → 2027-02-08 |
| 44 | Завершение внедрения | 2026-10-07 → 2027-02-08 (+124d) | 2026-10-07 → 2027-02-08 (+124d) |  |  | none → 0d |  | baseline start none → 2027-02-08; baseline finish none → 2027-02-08 |
| 45 | Завершение проекта | 2026-10-07 → 2027-02-08 (+124d) | 2026-10-07 → 2027-02-08 (+124d) |  |  | none → 0d |  | baseline start none → 2027-02-08; baseline finish none → 2027-02-08 |

## Version 8 (saved 2026-10-30, file Проект1 — Анализ_Стоимости.mpp)

Note of the change: AddLabs

Last finish 2027-02-08 → 2027-01-06 (-33d).

Added:

| ID | Task | Duration | Start | Finish | Predecessors | Resources |
| --- | --- | --- | --- | --- | --- | --- |
| 17 | **Создание прототипа** | 6d | 2026-10-13 | 2026-10-21 |  |  |
| 30 | Подготовка контента и заполнение страниц | 4d | 2026-11-20 | 2026-11-25 | 28 | Контент-менеджер |
| 33 | Интеграция с внешними системами и сервисами | 3d | 2026-12-04 | 2026-12-08 | 32 | Бэкенд-разработчик; Интернет [0.1%] |
| 46 | Разработка макетов страниц | 1d? | 2026-10-07 | 2026-10-07 |  |  |

Removed: 18 Создание прототипа; 30 Подготовка контента и заполнение; 33 Интеграция с внешними системами и

Changed:

| ID | Task | Start | Finish | Duration | Complete | Total float | Predecessors | Other |
| --- | --- | --- | --- | --- | --- | --- | --- | --- |
| 1 | Начало проекта | 2026-09-18 → 2026-10-05 (+17d) | 2026-09-18 → 2026-10-05 (+17d) |  |  | 3.4d → none |  | baseline start 2026-09-18 → none; baseline finish 2026-09-18 → none |
| 2 | **Анализ требований** | 2026-09-18 → 2026-10-05 (+17d) | 2026-10-14 → 2026-11-17 (+34d) | 18.88d → 32d |  | 3.4d → 0d |  | baseline start 2026-09-18 → none; baseline finish 2026-10-22 → none |
| 3 | Встреча с заказчиком | 2026-09-18 → 2026-10-05 (+17d) | 2026-09-18 → 2026-10-05 (+17d) |  |  | 3.4d → none |  | baseline start 2026-09-18 → none; baseline finish 2026-09-18 → none |
| 4 | Сбор информации | 2026-09-21 → 2026-10-06 (+15d) | 2026-10-14 → 2026-11-17 (+34d) | 12.88d → 27d |  | 78.12d → 33d |  | baseline start 2026-09-21 → none; baseline finish 2026-10-22 → none |
| 5 | Написание документа требований | 2026-09-21 → 2026-10-06 (+15d) | 2026-09-22 → 2026-10-07 (+15d) |  |  | 3.4d → none |  | baseline start 2026-09-21 → none; baseline finish 2026-09-22 → none |
| 6 | Обсуждение требований с заказчиком | 2026-09-23 → 2026-10-08 (+15d) | 2026-09-23 → 2026-10-14 (+21d) | 1d → 2d |  | 3.4d → none |  | baseline start 2026-09-23 → none; baseline finish 2026-09-23 → none |
| 7 | Корректировка требований | 2026-09-24 → 2026-10-09 (+15d) | 2026-09-29 → 2026-10-16 (+17d) |  |  | 3.4d → none |  | baseline start 2026-09-24 → none; baseline finish 2026-09-29 → none |
| 8 | Подготовка договора и устава | 2026-09-24 → 2026-10-09 (+15d) | 2026-09-25 → 2026-10-12 (+17d) |  |  | 5.4d → none |  | baseline start 2026-09-24 → none; baseline finish 2026-09-25 → none |
| 9 | Согласование документов с заказчиком | 2026-09-30 → 2026-10-19 (+19d) | 2026-10-01 → 2026-10-28 (+27d) | 2d → 4d |  | 3.4d → -10d |  | baseline start 2026-09-30 → none; baseline finish 2026-10-01 → none |
| 10 | Анализ требований | 2026-10-01 → 2026-10-15 (+14d) | 2026-10-01 → 2026-10-15 (+14d) |  |  | 3.4d → none |  | baseline start 2026-10-01 → none; baseline finish 2026-10-01 → none |
| 11 | **Разработка ТЗ** | 2026-10-02 → 2026-10-12 (+10d) | 2026-10-26 → 2026-11-06 (+11d) | 16.4d → 20d |  |  |  | baseline start 2026-10-02 → none; baseline finish 2026-10-20 → none |
| 12 | Определение структуры веб-приложения | 2026-10-02 → 2026-10-21 (+19d) | 2026-10-12 → 2026-11-02 (+21d) |  |  | 3.4d → none |  | baseline start 2026-10-02 → none; baseline finish 2026-10-12 → none |
| 13 | Выбор технологий | 2026-10-14 → 2026-10-22 (+8d) | 2026-10-16 → 2026-10-23 (+7d) |  |  |  |  | baseline start 2026-10-09 → none; baseline finish 2026-10-12 → none |
| 14 | Разработка ТЗ | 2026-10-16 → 2026-10-26 (+10d) | 2026-10-22 → 2026-11-06 (+15d) | 4d → 9d |  | 0d → none |  | resources Руководитель проекта; Бизнес-аналитик; Бэкенд- разработчик; Бумага → Руководитель проекта; Бизнес-аналитик; Веб-архитектор; Бумага; baseline start 2026-10-13 → none; baseline finish 2026-10-16 → none |
| 15 | Согласование ТЗ с заказчиком | 2026-10-22 → 2026-10-12 (-10d) | 2026-10-26 → 2026-10-20 (-6d) | 2d → 4d |  | 0d → none |  | baseline start 2026-10-19 → none; baseline finish 2026-10-20 → none |
| 16 | Завершение разработки ТЗ | 2026-10-26 → 2026-10-13 (-13d) | 2026-10-26 → 2026-10-13 (-13d) |  |  | 0d → none |  | baseline start 2026-10-20 → none; baseline finish 2026-10-20 → none |
| 18 | Создание прототипа | 2026-10-21 A → 2026-10-13 (-8d) | 2026-10-28 → 2026-10-16 (-12d) | 6d → 4d | 57% → 0% | 0d → none | none → 16 | resources none → Веб-архитектор; baseline start 2026-10-21 → none; baseline finish 2026-10-28 → none |
| 19 | Согласование с заказчиком | 2026-10-27 → 2026-10-19 (-8d) | 2026-10-28 → 2026-10-20 (-8d) |  |  | 0d → none | Создание прототипа → 18 | baseline start 2026-10-27 → none; baseline finish 2026-10-28 → none |
| 20 | Завершение создания прототипа | 2026-10-28 → 2026-10-21 (-7d) | 2026-10-28 → 2026-10-21 (-7d) |  |  | 0d → none |  | baseline start 2026-10-28 → none; baseline finish 2026-10-28 → none |
| 21 | **Разработка дизайна веб-приложения** | 2026-10-29 → 2026-10-21 (-8d) | 2026-11-27 → 2026-11-13 (-14d) | 21d → 18d |  |  |  | baseline start 2026-10-29 → none; baseline finish 2026-11-27 → none |
| 22 | Разработка макетов страниц | 2026-10-29 → 2026-10-21 (-8d) | 2026-11-16 → 2026-11-09 (-7d) |  |  | 0d → none |  | baseline start 2026-10-29 → none; baseline finish 2026-11-16 → none |
| 23 | Согласование макетов с заказчиком | 2026-11-16 → 2026-10-21 (-26d) | 2026-11-20 → 2026-11-13 (-7d) | 4d → 8d |  | 0d → none |  | baseline start 2026-11-16 → none; baseline finish 2026-11-20 → none |
| 24 | Доработка макетов | 2026-11-25 → 2026-10-27 (-29d) | 2026-11-26 → 2026-10-27 (-30d) |  |  | 0d → none | 23FS+3d → 23 | baseline start 2026-11-25 → none; baseline finish 2026-11-26 → none |
| 25 | Утверждение окончательного варианта | 2026-11-26 → 2026-11-02 (-24d) | 2026-11-27 → 2026-11-02 (-25d) |  |  | 0d → none | 24 → 24FS+3d | baseline start 2026-11-26 → none; baseline finish 2026-11-27 → none |
| 26 | Завершение разработки дизайна | 2026-11-27 → 2026-10-29 (-29d) | 2026-11-27 → 2026-10-29 (-29d) |  |  | 0d → none |  | baseline start 2026-11-27 → none; baseline finish 2026-11-27 → none |
| 27 | **Верстка и программирование** | 2026-11-27 → 2026-10-29 (-29d) | 2027-01-13 → 2026-12-09 (-35d) |  |  | 0d → none |  | baseline start 2026-11-27 → none; baseline finish 2027-01-13 → none |
| 28 | Разработка клиентской части приложения | 2026-11-27 → 2026-10-29 (-29d) | 2026-12-21 → 2026-11-19 (-32d) |  |  | 0d → none |  | baseline start 2026-11-27 → none; baseline finish 2026-12-21 → none |
| 29 | Разработка серверной части приложения | 2026-11-27 → 2026-10-29 (-29d) | 2026-12-18 → 2026-11-18 (-30d) |  |  | 5d → none |  | resources Бэкенд- разработчик; Покупка лицензии на ПО → Бэкенд-разработчик; Покупка лицензии на ПО; baseline start 2026-11-27 → none; baseline finish 2026-12-18 → none |
| 31 | Тестирование | 2026-12-29 → 2026-11-26 (-33d) | 2026-12-31 → 2026-11-27 (-34d) |  |  | 0d → none | 29, Подготовка контента и заполнение → 29, 30 | baseline start 2026-12-29 → none; baseline finish 2026-12-31 → none |
| 32 | Правка кода, устранение сбоев в работе | 2026-12-31 → 2026-11-30 (-31d) | 2027-01-08 → 2026-12-03 (-36d) |  |  | 0d → none |  | resources Фронтенд-разработчик [80%]; Бэкенд- разработчик [80%] → Фронтенд-разработчик [80%]; Бэкенд-разработчик [80%]; baseline start 2026-12-31 → none; baseline finish 2027-01-08 → none |
| 34 | Завершение верстки и программирования | 2027-01-13 → 2026-12-09 (-35d) | 2027-01-13 → 2026-12-09 (-35d) |  |  | 0d → none | Интеграция с внешними системами и → 33 | baseline start 2027-01-13 → none; baseline finish 2027-01-13 → none |
| 35 | **Тестирование и отладка веб-приложения** | 2027-01-13 → 2026-12-09 (-35d) | 2027-02-01 → 2026-12-29 (-34d) |  |  |  |  | baseline start 2027-01-13 → none; baseline finish 2027-02-01 → none |
| 36 | Техническое тестирование | 2027-01-13 → 2026-12-09 (-35d) | 2027-01-15 → 2026-12-10 (-36d) |  |  | 0d → none |  | baseline start 2027-01-13 → none; baseline finish 2027-01-15 → none |
| 37 | Тестирование на стороне заказчика | 2027-01-15 → 2026-12-11 (-35d) | 2027-01-21 → 2026-12-16 (-36d) |  |  | 0d → none |  | baseline start 2027-01-15 → none; baseline finish 2027-01-21 → none |
| 38 | Отладка | 2027-01-21 → 2026-12-17 (-35d) | 2027-02-01 → 2026-12-29 (-34d) |  |  | 0d → none |  | resources Фронтенд-разработчик; Бэкенд- разработчик → Фронтенд-разработчик; Бэкенд-разработчик; baseline start 2027-01-21 → none; baseline finish 2027-02-01 → none |
| 39 | Завершение тестирования и отладки | 2027-02-01 → 2026-12-29 (-34d) | 2027-02-01 → 2026-12-29 (-34d) |  |  | 0d → none |  | baseline start 2027-02-01 → none; baseline finish 2027-02-01 → none |
| 40 | **Внедрение** | 2027-02-01 → 2026-10-07 (-117d) | 2027-02-08 → 2027-01-06 (-33d) | 5d → 63d |  |  |  | baseline start 2027-02-01 → none; baseline finish 2027-02-08 → none |
| 41 | Перенос на рабочий сервер | 2027-02-01 → 2026-12-29 (-34d) | 2027-02-03 → 2026-12-31 (-34d) |  |  | 1d → none |  | resources Бэкенд- разработчик → Бэкенд-разработчик; baseline start 2027-02-01 → none; baseline finish 2027-02-03 → none |
| 42 | Формирование отчетности | 2027-02-01 → 2026-12-29 (-34d) | 2027-02-04 → 2027-01-04 (-31d) |  |  | 0d → none |  | baseline start 2027-02-01 → none; baseline finish 2027-02-04 → none |
| 43 | Передача веб-приложения заказчику | 2027-02-04 → 2027-01-04 (-31d) | 2027-02-08 → 2027-01-06 (-33d) |  |  | 0d → none |  | baseline start 2027-02-04 → none; baseline finish 2027-02-08 → none |
| 44 | Завершение внедрения | 2027-02-08 → 2026-10-07 (-124d) | 2027-02-08 → 2026-10-07 (-124d) |  |  | 0d → none |  | baseline start 2027-02-08 → none; baseline finish 2027-02-08 → none |
| 45 | Завершение проекта | 2027-02-08 → 2026-10-07 (-124d) | 2027-02-08 → 2026-10-07 (-124d) |  |  | 0d → none |  | baseline start 2027-02-08 → none; baseline finish 2027-02-08 → none |

## Version 9 (saved 2026-11-12, file По_Задачам.mpp)

Note of the change: AddPMP_10

Last finish 2027-01-06 → 2027-02-08 (+33d). Complete tasks 0 → 1.

Added:

| ID | Task | Duration | Start | Finish | Predecessors | Resources |
| --- | --- | --- | --- | --- | --- | --- |
| 18 | Создание прототипа | 4d | 2026-10-28 | 2026-11-02 | 16 | Веб-архитектор |
| 30 | Подготовка контента и заполнение | 4d | 2026-12-21 | 2026-12-29 | 28 | Контент-менеджер |
| 33 | Интеграция с внешними системами и | 3d | 2027-01-08 | 2027-01-13 | 32 | Бэкенд- разработчик; Интернет [0.1%] |

Removed: 17 Создание прототипа; 30 Подготовка контента и заполнение страниц; 33 Интеграция с внешними системами и сервисами; 46 Разработка макетов страниц

Changed:

| ID | Task | Start | Finish | Duration | Complete | Total float | Predecessors | Other |
| --- | --- | --- | --- | --- | --- | --- | --- | --- |
| 1 | Начало проекта | 2026-10-05 → 2026-09-18 (-17d) | 2026-10-05 → 2026-09-18 (-17d) |  |  | none → 5d |  | baseline start none → 2026-09-18; baseline finish none → 2026-09-18 |
| 2 | **Анализ требований** | 2026-10-05 → 2026-09-18 (-17d) | 2026-11-17 → 2026-10-14 (-34d) | 32d → 18.88d |  | 0d → 5d |  | baseline start none → 2026-09-18; baseline finish none → 2026-10-22 |
| 3 | Встреча с заказчиком | 2026-10-05 → 2026-09-18 (-17d) | 2026-10-05 → 2026-09-18 (-17d) |  |  | none → 5d |  | baseline start none → 2026-09-18; baseline finish none → 2026-09-18 |
| 4 | Сбор информации | 2026-10-06 → 2026-09-21 (-15d) | 2026-11-17 → 2026-10-14 (-34d) | 27d → 12.88d |  | 33d → 78.12d |  | baseline start none → 2026-09-21; baseline finish none → 2026-10-22 |
| 5 | Написание документа требований | 2026-10-06 → 2026-09-21 (-15d) | 2026-10-07 → 2026-09-22 (-15d) |  |  | none → 5d |  | baseline start none → 2026-09-21; baseline finish none → 2026-09-22 |
| 6 | Обсуждение требований с заказчиком | 2026-10-08 → 2026-09-23 (-15d) | 2026-10-14 → 2026-09-23 (-21d) | 2d → 1d |  | none → 5d |  | baseline start none → 2026-09-23; baseline finish none → 2026-09-23 |
| 7 | Корректировка требований | 2026-10-09 → 2026-09-24 (-15d) | 2026-10-16 → 2026-09-29 (-17d) |  |  | none → 5d |  | baseline start none → 2026-09-24; baseline finish none → 2026-09-29 |
| 8 | Подготовка договора и устава | 2026-10-09 → 2026-09-24 (-15d) | 2026-10-12 → 2026-09-25 (-17d) |  |  | none → 7d |  | baseline start none → 2026-09-24; baseline finish none → 2026-09-25 |
| 9 | Согласование документов с заказчиком | 2026-10-19 → 2026-09-30 (-19d) | 2026-10-28 → 2026-10-01 (-27d) | 4d → 2d |  | -10d → 5d |  | baseline start none → 2026-09-30; baseline finish none → 2026-10-01 |
| 10 | Анализ требований | 2026-10-15 → 2026-10-01 (-14d) | 2026-10-15 → 2026-10-01 (-14d) |  |  | none → 5d |  | baseline start none → 2026-10-01; baseline finish none → 2026-10-01 |
| 11 | **Разработка ТЗ** | 2026-10-12 → 2026-10-02 (-10d) | 2026-11-06 → 2026-10-27 (-10d) | 20d → 18d |  |  |  | baseline start none → 2026-10-02; baseline finish none → 2026-10-20 |
| 12 | Определение структуры веб-приложения | 2026-10-21 → 2026-10-02 (-19d) | 2026-11-02 → 2026-10-12 (-21d) |  |  | none → 5d |  | baseline start none → 2026-10-02; baseline finish none → 2026-10-12 |
| 13 | Выбор технологий | 2026-10-22 → 2026-10-16 (-6d) | 2026-10-23 → 2026-10-19 (-4d) |  |  |  |  | baseline start none → 2026-10-09; baseline finish none → 2026-10-12 |
| 14 | Разработка ТЗ | 2026-10-26 → 2026-10-20 (-6d) | 2026-11-06 → 2026-10-23 (-14d) | 9d → 4d |  | none → 0d |  | resources Руководитель проекта; Бизнес-аналитик; Веб-архитектор; Бумага → Руководитель проекта; Бизнес-аналитик; Бэкенд- разработчик; Бумага; baseline start none → 2026-10-13; baseline finish none → 2026-10-16 |
| 15 | Согласование ТЗ с заказчиком | 2026-10-12 → 2026-10-26 (+14d) | 2026-10-20 → 2026-10-27 (+7d) | 4d → 2d |  | none → 0d |  | baseline start none → 2026-10-19; baseline finish none → 2026-10-20 |
| 16 | Завершение разработки ТЗ | 2026-10-13 → 2026-10-27 (+14d) | 2026-10-13 → 2026-10-27 (+14d) |  |  | none → 0d |  | baseline start none → 2026-10-20; baseline finish none → 2026-10-20 |
| 17 | **Создание прототипа** | 2026-10-13 → 2026-10-28 (+15d) | 2026-10-16 → 2026-11-04 (+19d) | 4d → 6d |  | none → 0d | 16 → none | resources Веб-архитектор → none; baseline start none → 2026-10-21; baseline finish none → 2026-10-28 |
| 19 | Согласование с заказчиком | 2026-10-19 → 2026-11-03 (+15d) | 2026-10-20 → 2026-11-04 (+15d) |  |  | none → 0d | 17 → 18 | baseline start none → 2026-10-27; baseline finish none → 2026-10-28 |
| 20 | Завершение создания прототипа | 2026-10-21 → 2026-11-04 (+14d) | 2026-10-21 → 2026-11-04 (+14d) |  |  | none → 0d |  | baseline start none → 2026-10-28; baseline finish none → 2026-10-28 |
| 21 | **Разработка дизайна веб-приложения** | 2026-10-21 → 2026-11-05 (+15d) | 2026-11-13 → 2026-12-04 (+21d) | 18d → 21d |  |  |  | baseline start none → 2026-10-29; baseline finish none → 2026-11-27 |
| 22 | Разработка макетов страниц | 2026-10-21 → 2026-11-05 (+15d) | 2026-11-09 → 2026-11-23 (+14d) |  |  | none → 0d |  | baseline start none → 2026-10-29; baseline finish none → 2026-11-16 |
| 23 | Согласование макетов с заказчиком | 2026-10-21 → 2026-11-23 (+33d) | 2026-11-13 → 2026-11-27 (+14d) | 8d → 4d |  | none → 0d |  | baseline start none → 2026-11-16; baseline finish none → 2026-11-20 |
| 24 | Доработка макетов | 2026-10-27 → 2026-12-02 (+36d) | 2026-10-27 → 2026-12-03 (+37d) |  |  | none → 0d | 23 → 23FS+3d | baseline start none → 2026-11-25; baseline finish none → 2026-11-26 |
| 25 | Утверждение окончательного варианта | 2026-11-02 → 2026-12-03 (+31d) | 2026-11-02 → 2026-12-04 (+32d) |  |  | none → 0d | 24FS+3d → 24 | baseline start none → 2026-11-26; baseline finish none → 2026-11-27 |
| 26 | Завершение разработки дизайна | 2026-10-29 → 2026-12-04 (+36d) | 2026-10-29 → 2026-12-04 (+36d) |  |  | none → 0d |  | baseline start none → 2026-11-27; baseline finish none → 2026-11-27 |
| 27 | **Верстка и программирование** | 2026-10-29 → 2026-11-27 A (+29d) | 2026-12-09 → 2027-01-13 (+35d) |  | 0% → 36% | none → 0d |  | baseline start none → 2026-11-27; baseline finish none → 2027-01-13 |
| 28 | Разработка клиентской части приложения | 2026-10-29 → 2026-11-27 A (+29d) | 2026-11-19 → 2026-12-21 A (+32d) |  | 0% → 100% |  |  | baseline start none → 2026-11-27; baseline finish none → 2026-12-21 |
| 29 | Разработка серверной части приложения | 2026-10-29 → 2026-12-04 (+36d) | 2026-11-18 → 2026-12-29 (+41d) |  |  | none → 0d |  | resources Бэкенд-разработчик; Покупка лицензии на ПО → Бэкенд- разработчик; Покупка лицензии на ПО; baseline start none → 2026-11-27; baseline finish none → 2026-12-18 |
| 31 | Тестирование | 2026-11-26 → 2026-12-29 (+33d) | 2026-11-27 → 2026-12-31 (+34d) |  |  | none → 0d | 29, Подготовка контента и заполнение страниц → 29, 30 | baseline start none → 2026-12-29; baseline finish none → 2026-12-31 |
| 32 | Правка кода, устранение сбоев в работе | 2026-11-30 → 2026-12-31 (+31d) | 2026-12-03 → 2027-01-08 (+36d) |  |  | none → 0d |  | resources Фронтенд-разработчик [80%]; Бэкенд-разработчик [80%] → Фронтенд-разработчик [80%]; Бэкенд- разработчик [80%]; baseline start none → 2026-12-31; baseline finish none → 2027-01-08 |
| 34 | Завершение верстки и программирования | 2026-12-09 → 2027-01-13 (+35d) | 2026-12-09 → 2027-01-13 (+35d) |  |  | none → 0d | Интеграция с внешними системами и сервисами → 33 | baseline start none → 2027-01-13; baseline finish none → 2027-01-13 |
| 35 | **Тестирование и отладка веб-приложения** | 2026-12-09 → 2027-01-13 (+35d) | 2026-12-29 → 2027-02-01 (+34d) |  |  |  |  | baseline start none → 2027-01-13; baseline finish none → 2027-02-01 |
| 36 | Техническое тестирование | 2026-12-09 → 2027-01-13 (+35d) | 2026-12-10 → 2027-01-15 (+36d) |  |  | none → 0d |  | baseline start none → 2027-01-13; baseline finish none → 2027-01-15 |
| 37 | Тестирование на стороне заказчика | 2026-12-11 → 2027-01-15 (+35d) | 2026-12-16 → 2027-01-21 (+36d) |  |  | none → 0d |  | baseline start none → 2027-01-15; baseline finish none → 2027-01-21 |
| 38 | Отладка | 2026-12-17 → 2027-01-21 (+35d) | 2026-12-29 → 2027-02-01 (+34d) |  |  | none → 0d |  | resources Фронтенд-разработчик; Бэкенд-разработчик → Фронтенд-разработчик; Бэкенд- разработчик; baseline start none → 2027-01-21; baseline finish none → 2027-02-01 |
| 39 | Завершение тестирования и отладки | 2026-12-29 → 2027-02-01 (+34d) | 2026-12-29 → 2027-02-01 (+34d) |  |  | none → 0d |  | baseline start none → 2027-02-01; baseline finish none → 2027-02-01 |
| 40 | **Внедрение** | 2026-10-07 → 2027-02-01 (+117d) | 2027-01-06 → 2027-02-08 (+33d) | 63d → 5d |  |  |  | baseline start none → 2027-02-01; baseline finish none → 2027-02-08 |
| 41 | Перенос на рабочий сервер | 2026-12-29 → 2027-02-01 (+34d) | 2026-12-31 → 2027-02-03 (+34d) |  |  | none → 1d |  | resources Бэкенд-разработчик → Бэкенд- разработчик; baseline start none → 2027-02-01; baseline finish none → 2027-02-03 |
| 42 | Формирование отчетности | 2026-12-29 → 2027-02-01 (+34d) | 2027-01-04 → 2027-02-04 (+31d) |  |  | none → 0d |  | baseline start none → 2027-02-01; baseline finish none → 2027-02-04 |
| 43 | Передача веб-приложения заказчику | 2027-01-04 → 2027-02-04 (+31d) | 2027-01-06 → 2027-02-08 (+33d) |  |  | none → 0d |  | baseline start none → 2027-02-04; baseline finish none → 2027-02-08 |
| 44 | Завершение внедрения | 2026-10-07 → 2027-02-08 (+124d) | 2026-10-07 → 2027-02-08 (+124d) |  |  | none → 0d |  | baseline start none → 2027-02-08; baseline finish none → 2027-02-08 |
| 45 | Завершение проекта | 2026-10-07 → 2027-02-08 (+124d) | 2026-10-07 → 2027-02-08 (+124d) |  |  | none → 0d |  | baseline start none → 2027-02-08; baseline finish none → 2027-02-08 |

## Version 10 (data date 2027-02-08, saved 2026-11-12, file По_Ресурсам.mpp)

Note of the change: AddPMP_10

Last finish stays 2027-02-08. Complete tasks 1 → 2.

Changed:

| ID | Task | Start | Finish | Duration | Complete | Total float |
| --- | --- | --- | --- | --- | --- | --- |
| 11 | **Разработка ТЗ** |  | 2026-10-27 → 2026-11-17 (+21d) | 18d → 32.81d |  |  |
| 13 | Выбор технологий | 2026-10-16 → 2026-11-05 (+20d) | 2026-10-19 → 2026-11-09 (+21d) |  |  |  |
| 14 | Разработка ТЗ | 2026-10-20 → 2026-11-09 (+20d) | 2026-10-23 → 2026-11-13 (+21d) |  |  |  |
| 15 | Согласование ТЗ с заказчиком | 2026-10-26 → 2026-11-13 (+18d) | 2026-10-27 → 2026-11-17 (+21d) |  |  |  |
| 16 | Завершение разработки ТЗ | 2026-10-27 → 2026-11-17 (+21d) | 2026-10-27 → 2026-11-17 (+21d) |  |  |  |
| 17 | **Создание прототипа** | 2026-10-28 → 2026-11-17 (+20d) | 2026-11-04 → 2026-11-25 (+21d) |  |  |  |
| 18 | Создание прототипа | 2026-10-28 → 2026-11-17 (+20d) | 2026-11-02 → 2026-11-23 (+21d) |  |  |  |
| 19 | Согласование с заказчиком | 2026-11-03 → 2026-11-23 (+20d) | 2026-11-04 → 2026-11-25 (+21d) |  |  |  |
| 20 | Завершение создания прототипа | 2026-11-04 → 2026-11-25 (+21d) | 2026-11-04 → 2026-11-25 (+21d) |  |  |  |
| 21 | **Разработка дизайна веб-приложения** | 2026-11-05 → 2026-11-25 (+20d) | 2026-12-04 → 2026-12-28 (+24d) |  |  |  |
| 22 | Разработка макетов страниц | 2026-11-05 → 2026-11-25 (+20d) | 2026-11-23 → 2026-12-11 (+18d) |  |  |  |
| 23 | Согласование макетов с заказчиком | 2026-11-23 → 2026-12-11 (+18d) | 2026-11-27 → 2026-12-17 (+20d) |  |  |  |
| 24 | Доработка макетов | 2026-12-02 → 2026-12-22 (+20d) | 2026-12-03 → 2026-12-23 (+20d) |  |  |  |
| 25 | Утверждение окончательного варианта | 2026-12-03 → 2026-12-23 (+20d) | 2026-12-04 → 2026-12-28 (+24d) |  |  |  |
| 26 | Завершение разработки дизайна | 2026-12-04 → 2026-12-28 (+24d) | 2026-12-04 → 2026-12-28 (+24d) |  |  |  |
| 27 | **Верстка и программирование** | 2026-11-27 A → 2026-12-28 A (+31d) | 2027-01-13 → 2027-02-08 (+26d) | 29d → 27d | 36% → 4% |  |
| 28 | Разработка клиентской части приложения | 2026-11-27 A → 2026-12-28 (+31d) | 2026-12-21 A → 2027-02-02 (+43d) |  | 100% → 0% | none → 0d |
| 29 | Разработка серверной части приложения | 2026-12-04 → 2026-12-31 (+27d) | 2026-12-29 → 2027-02-05 (+38d) |  |  | 0d → 0.94d |
| 30 | Подготовка контента и заполнение | 2026-12-21 → 2027-02-02 (+43d) | 2026-12-29 → 2027-02-08 (+41d) |  |  |  |
| 31 | Тестирование | 2026-12-29 A | 2026-12-31 A | 2d → 1.91d | 0% → 100% | 0d → none |
| 35 | **Тестирование и отладка веб-приложения** | 2027-01-13 A |  | 13d → 12.91d | 0% → 15% |  |
| 36 | Техническое тестирование | 2027-01-13 A | 2027-01-15 A | 2d → 1.91d | 0% → 100% | 0d → none |

## Version 11 (data date 2027-02-16, saved 2026-11-12, file Факт.mpp)

Note of the change: AddPMP_10

Last finish 2027-02-08 → 2027-02-16 (+8d). Complete tasks 2 → 4.

Changed:

| ID | Task | Start | Finish | Duration | Complete | Total float |
| --- | --- | --- | --- | --- | --- | --- |
| 11 | **Разработка ТЗ** |  | 2026-11-17 → 2027-02-03 (+78d) | 32.81d → 83.8d |  |  |
| 13 | Выбор технологий | 2026-11-05 → 2027-01-22 (+78d) | 2026-11-09 → 2027-01-26 (+78d) |  |  |  |
| 14 | Разработка ТЗ | 2026-11-09 → 2027-01-26 (+78d) | 2026-11-13 → 2027-02-01 (+80d) |  |  |  |
| 15 | Согласование ТЗ с заказчиком | 2026-11-13 → 2027-02-01 (+80d) | 2026-11-17 → 2027-02-03 (+78d) |  |  |  |
| 16 | Завершение разработки ТЗ | 2026-11-17 → 2027-02-03 (+78d) | 2026-11-17 → 2027-02-03 (+78d) |  |  |  |
| 17 | **Создание прототипа** | 2026-11-17 → 2027-02-03 (+78d) | 2026-11-25 → 2027-02-16 (+83d) | 6d → 9d |  |  |
| 18 | Создание прототипа | 2026-11-17 → 2027-02-03 (+78d) | 2026-11-23 → 2027-02-09 (+78d) |  |  |  |
| 19 | Согласование с заказчиком | 2026-11-23 → 2027-02-09 (+78d) | 2026-11-25 → 2027-02-16 (+83d) | 2d → 3d |  |  |
| 20 | Завершение создания прототипа | 2026-11-25 → 2027-02-16 (+83d) | 2026-11-25 → 2027-02-16 (+83d) |  |  |  |
| 21 | **Разработка дизайна веб-приложения** | 2026-11-25 → 2026-10-29 A (-27d) | 2026-12-28 → 2026-11-30 (-28d) | 21d → 22.8d | 0% → 99% |  |
| 22 | Разработка макетов страниц | 2026-11-25 → 2026-10-29 A (-27d) | 2026-12-11 → 2026-11-17 A (-24d) | 12d → 13.2d | 0% → 100% | 0d → none |
| 23 | Согласование макетов с заказчиком | 2026-12-11 → 2026-11-17 A (-24d) | 2026-12-17 → 2026-11-23 A (-24d) | 4d → 4.4d | 0% → 100% | 0d → none |
| 24 | Доработка макетов | 2026-12-22 → 2026-11-26 A (-26d) | 2026-12-23 → 2026-11-27 A (-26d) | 1d → 1.1d | 0% → 100% | 0d → none |
| 25 | Утверждение окончательного варианта | 2026-12-23 → 2026-11-27 A (-26d) | 2026-12-28 → 2026-11-30 A (-28d) | 1d → 1.1d | 0% → 100% | 0d → none |
| 26 | Завершение разработки дизайна | 2026-12-28 → 2026-11-30 (-28d) | 2026-12-28 → 2026-11-30 (-28d) |  |  |  |
| 27 | **Верстка и программирование** | 2026-12-28 A → 2026-11-30 (-28d) | 2027-02-08 → 2027-01-15 (-24d) | 27d → 29d | 4% → 0% |  |
| 28 | Разработка клиентской части приложения | 2026-12-28 → 2026-11-30 (-28d) | 2027-02-02 → 2026-12-22 (-42d) |  |  |  |
| 29 | Разработка серверной части приложения | 2026-12-31 → 2026-11-30 (-31d) | 2027-02-05 → 2026-12-21 (-46d) |  |  | 0.94d → 5d |
| 30 | Подготовка контента и заполнение | 2027-02-02 → 2026-12-22 (-42d) | 2027-02-08 → 2026-12-30 (-40d) |  |  |  |
| 31 | Тестирование | 2026-12-29 A → 2026-12-30 (+1d) | 2026-12-31 A → 2027-01-05 (+5d) | 1.91d → 2d | 100% → 0% | none → 0d |
| 32 | Правка кода, устранение сбоев в работе | 2026-12-31 → 2027-01-05 (+5d) | 2027-01-08 → 2027-01-12 (+4d) |  |  | 17.91d → 0d |
| 33 | Интеграция с внешними системами и | 2027-01-08 → 2027-01-12 (+4d) | 2027-01-13 → 2027-01-15 (+2d) |  |  | 17.91d → 0d |
| 34 | Завершение верстки и программирования | 2027-01-13 → 2027-01-15 (+2d) | 2027-01-13 → 2027-01-15 (+2d) |  |  | 17.91d → 0d |
| 35 | **Тестирование и отладка веб-приложения** | 2027-01-13 A → 2027-01-15 (+2d) | 2027-02-01 → 2027-02-09 (+8d) | 12.91d → 17d | 15% → 0% |  |
| 36 | Техническое тестирование | 2027-01-13 A → 2027-01-15 (+2d) | 2027-01-15 A → 2027-01-19 (+4d) | 1.91d → 2d | 100% → 0% | none → 0d |
| 37 | Тестирование на стороне заказчика | 2027-01-15 → 2027-01-19 (+4d) | 2027-01-21 → 2027-01-25 (+4d) |  |  |  |
| 38 | Отладка | 2027-01-21 → 2027-01-25 (+4d) | 2027-02-01 → 2027-02-09 (+8d) | 7d → 11d |  |  |
| 39 | Завершение тестирования и отладки | 2027-02-01 → 2027-02-09 (+8d) | 2027-02-01 → 2027-02-09 (+8d) |  |  |  |
| 40 | **Внедрение** | 2027-02-01 → 2027-02-09 (+8d) | 2027-02-08 → 2027-02-16 (+8d) |  |  |  |
| 41 | Перенос на рабочий сервер | 2027-02-01 → 2027-02-09 (+8d) | 2027-02-03 → 2027-02-11 (+8d) |  |  |  |
| 42 | Формирование отчетности | 2027-02-01 → 2027-02-09 (+8d) | 2027-02-04 → 2027-02-12 (+8d) |  |  |  |
| 43 | Передача веб-приложения заказчику | 2027-02-04 → 2027-02-12 (+8d) | 2027-02-08 → 2027-02-16 (+8d) |  |  |  |
| 44 | Завершение внедрения | 2027-02-08 → 2027-02-16 (+8d) | 2027-02-08 → 2027-02-16 (+8d) |  |  |  |
| 45 | Завершение проекта | 2027-02-08 → 2027-02-16 (+8d) | 2027-02-08 → 2027-02-16 (+8d) |  |  |  |
